# 点筋血糖管理系统总体计划

Schedule from MS Project, 2018-06-19 to 2018-08-16.
苏州开创软件

## Calendars

- 标准: Mon-Fri 08:00-12:00, 13:00-17:00; Sat-Sun off.

## Resources

| Resource |
| --- |
| PG-Icarus |
| PG-Aaron |
| PG-Peter |
| QA-Hedy |
| UI-Candy |
| PM-Sam |

## Schedule

| ID | WBS | Task | Duration | Start | Finish | Predecessors | Total slack | Free slack | Constraint | Resources | Work |
| --- | --- | --- | --- | --- | --- | --- | --- | --- | --- | --- | --- |
| 1 | 1 | **点筋血糖管理系统--总体计划** | 43d | 2018-06-19 | 2018-08-16 |  | 0d |  |  |  | 688h |
| 2 | 1.1 | 项目管理 | 4d | 2018-06-19 | 2018-06-22 |  | 39d |  |  | PM-Sam | 32h |
| 3 | 1.2 | **系统设计** | 6d | 2018-06-19 | 2018-06-26 |  | 2d |  |  |  | 104h |
| 4 | 1.2.1 | 系统初步需求内部沟通及系统底层框架搭建 | 2d | 2018-06-21 | 2018-06-22 |  | 0d |  | start no earlier than 2018-06-21 | PG-Aaron | 16h |
| 5 | 1.2.2 | 系统UI设计 | 5d | 2018-06-19 | 2018-06-25 |  | 36d |  |  | UI-Candy | 40h |
| 6 | 1.2.3 | 数据库设计 | 2d | 2018-06-25 | 2018-06-26 | 4 | 0d |  | start no earlier than 2017-07-19 | PG-Aaron; PG-Icarus; PG-Peter | 48h |
| 7 | 1.3 | **系统实现** | 13d | 2018-06-27 | 2018-07-13 |  | 0d |  |  |  | 264h |
| 8 | 1.3.1 | 数据库设计评审 | 1d | 2018-06-27 | 2018-06-27 | 6 | 0d |  | start no earlier than 2017-07-19 | PG-Aaron | 8h |
| 9 | 1.3.2 | **系统开发** | 12d | 2018-06-28 | 2018-07-13 | 8 | 19d |  |  |  | 256h |
| 10 | 1.3.2.1 | **管理后台** | 3d | 2018-06-28 | 2018-07-02 |  | 19d | 0d |  |  | 72h |
| 11 | 1.3.2.1.1 | 管理员管理 | 1d | 2018-06-28 | 2018-06-28 | 8 | 19d | 0d |  | PG-Aaron | 8h |
| 12 | 1.3.2.1.2 | 角色管理 | 1d | 2018-06-29 | 2018-06-29 | 11 | 19d | 0d |  | PG-Aaron | 8h |
| 13 | 1.3.2.1.3 | 管理日志 | 1d | 2018-07-02 | 2018-07-02 | 12 | 19d |  |  | PG-Aaron | 8h |
| 14 | 1.3.2.1.4 | 数据字典 | 1d | 2018-06-28 | 2018-06-28 | 8 | 19d | 0d |  | PG-Icarus | 8h |
| 15 | 1.3.2.1.5 | 会员管理 | 2d | 2018-06-28 | 2018-06-29 | 8 | 19d | 0d |  | PG-Peter | 16h |
| 16 | 1.3.2.1.6 | 食品 | 2d | 2018-06-29 | 2018-07-02 | 14 | 19d | 0d |  | PG-Icarus | 16h |
| 17 | 1.3.2.1.7 | 体质指数（BMI） | 1d | 2018-07-02 | 2018-07-02 | 15 | 19d |  |  | PG-Peter | 8h |
| 18 | 1.3.2.2 | **Android** | 9d | 2018-07-03 | 2018-07-13 | 10 | 19d |  |  |  | 184h |
| 19 | 1.3.2.2.1 | 登录注册 | 1d | 2018-07-03 | 2018-07-03 | 10 | 24d | 0d |  | PG-Peter | 8h |
| 20 | 1.3.2.2.2 | **个人中心** | 5d | 2018-07-04 | 2018-07-10 |  | 24d | 0d |  |  | 40h |
| 21 | 1.3.2.2.2.1 | 个人信息 | 1d | 2018-07-04 | 2018-07-04 | 19 | 24d | 0d |  | PG-Peter | 8h |
| 22 | 1.3.2.2.2.2 | 健康档案 | 2d | 2018-07-05 | 2018-07-06 | 21 | 24d | 0d |  | PG-Peter | 16h |
| 23 | 1.3.2.2.2.3 | 我的联系人 | 2d | 2018-07-09 | 2018-07-10 | 22 | 24d |  |  | PG-Peter | 16h |
| 24 | 1.3.2.2.3 | **预评估** | 2d | 2018-07-03 | 2018-07-04 |  | 19d | 0d |  |  | 16h |
| 25 | 1.3.2.2.3.1 | 糖尿病风险预评估 | 1d | 2018-07-03 | 2018-07-03 |  | 19d | 0d |  | PG-Aaron | 8h |
| 26 | 1.3.2.2.3.2 | 糖尿病症状预评估 | 1d | 2018-07-04 | 2018-07-04 | 25 | 19d |  |  | PG-Aaron | 8h |

| ID | WBS | Task | Duration | Start | Finish | Predecessors | Total slack | Free slack | Resources | Work |
| --- | --- | --- | --- | --- | --- | --- | --- | --- | --- | --- |
| 27 | 1.3.2.2.4 | **速记录** | 8d | 2018-07-03 | 2018-07-12 |  | 21d |  |  | 96h |
| 28 | 1.3.2.2.4.1 | 达标统计 | 2d | 2018-07-05 | 2018-07-06 | 24 | 19d | 0d | PG-Aaron | 16h |
| 29 | 1.3.2.2.4.2 | 记饮食 | 5d | 2018-07-03 | 2018-07-09 | 16 | 25d | 0d | PG-Icarus | 40h |
| 30 | 1.3.2.2.4.3 | 记血压 | 1d | 2018-07-11 | 2018-07-11 | 20 | 24d | 0d | PG-Peter | 8h |
| 31 | 1.3.2.2.4.4 | 记血糖 | 1d | 2018-07-12 | 2018-07-12 | 30 | 24d | 0d | PG-Peter | 8h |
| 32 | 1.3.2.2.4.5 | 记运动 | 1d | 2018-07-09 | 2018-07-09 | 28 | 19d | 0d | PG-Aaron | 8h |
| 33 | 1.3.2.2.4.6 | 记糖化血蛋白 | 1d | 2018-07-10 | 2018-07-10 | 29 | 25d | 0d | PG-Icarus | 8h |
| 34 | 1.3.2.2.4.7 | 记体重 | 1d | 2018-07-11 | 2018-07-11 | 33 | 25d | 0d | PG-Icarus | 8h |
| 35 | 1.3.2.2.5 | **历史记录** | 4d | 2018-07-10 | 2018-07-13 |  | 19d |  |  | 24h |
| 36 | 1.3.2.2.5.1 | 血糖 | 1d | 2018-07-13 | 2018-07-13 | 31 | 24d |  | PG-Peter | 8h |
| 37 | 1.3.2.2.5.2 | 用药 | 1d | 2018-07-10 | 2018-07-10 | 32 | 19d |  | PG-Aaron | 8h |
| 38 | 1.3.2.2.5.3 | 饮食 | 1d | 2018-07-12 | 2018-07-12 | 34 | 25d |  | PG-Icarus | 8h |
| 39 | 1.4 | **测试** | 27d | 2018-06-28 | 2018-08-03 |  | 0d |  |  | 216h |
| 40 | 1.4.1 | **系统测试** | 11d | 2018-06-28 | 2018-07-12 | 8 | 0d |  |  | 88h |
| 41 | 1.4.1.1 | 功能测试、测试用例编写 | 11d | 2018-06-28 | 2018-07-12 |  | 0d |  | QA-Hedy | 88h |
| 42 | 1.4.2 | 集成测试 | 8d | 2018-07-13 | 2018-07-24 | 40 | 0d |  | QA-Hedy | 64h |
| 43 | 1.4.3 | 模拟初始化数据测试联调 | 8d | 2018-07-25 | 2018-08-03 | 42 | 0d |  | QA-Hedy | 64h |
| 44 | 1.5 | **UAT** | 5d | 2018-08-06 | 2018-08-10 |  | 0d |  |  | 40h |
| 45 | 1.5.1 | 制定UAT计划 | 1d | 2018-08-06 | 2018-08-06 | 43 | 0d |  | QA-Hedy | 8h |
| 46 | 1.5.2 | **数据准备** | 1d | 2018-08-07 | 2018-08-07 | 45 | 0d |  |  | 8h |
| 47 | 1.5.2.1 | 用户基础信息 | 1d | 2018-08-07 | 2018-08-07 | 37 | 0d |  | PG-Aaron | 8h |
| 48 | 1.5.3 | UAT环境部署 | 1d | 2018-08-08 | 2018-08-08 | 46 | 0d |  | PG-Aaron | 8h |
| 49 | 1.5.4 | 执行及结果分析 | 1d | 2018-08-09 | 2018-08-09 | 48 | 0d |  | QA-Hedy | 8h |
| 50 | 1.5.5 | UAT测试报告 | 1d | 2018-08-10 | 2018-08-10 | 49 | 0d |  | QA-Hedy | 8h |

| ID | WBS | Task | Duration | Start | Finish | Predecessors | Total slack | Resources | Work |
| --- | --- | --- | --- | --- | --- | --- | --- | --- | --- |
| 51 | 1.6 | **系统上线** | 4d | 2018-08-13 | 2018-08-16 |  | 0d |  | 32h |
| 52 | 1.6.1 | 生产环境部署 | 1d | 2018-08-13 | 2018-08-13 | 50 | 0d | PG-Aaron | 8h |
| 53 | 1.6.2 | 系统试运行及试运行过程问题微调 | 2d | 2018-08-14 | 2018-08-15 | 52 | 0d | QA-Hedy | 16h |
| 54 | 1.6.3 | 系统验收签字 | 1d | 2018-08-16 | 2018-08-16 | 53 | 0d | PG-Aaron | 8h |
